# Projektplan_09

Schedule from MS Project, 2014-06-02 to 2014-09-01, status date 2014-07-21, A marks actual dates.

## Calendars

- Standard: Mon-Fri 08:00-12:00, 13:00-17:00; Sat-Sun off. Exceptions (off unless hours are given): 2014-05-20 to 2014-08-30 (Frei, recurring).

## Resources

| Resource |
| --- |
| David |
| Felix |
| Tobias |
| Lukas |

## Schedule

| ID | WBS | Task | Type | Duration | Start | Finish | Predecessors | Complete | Remaining | Baseline start | Baseline finish | Baseline duration | Baseline 1 start | Baseline 1 finish | Total slack | Free slack | Constraint | Resources | Work | Actual work | Deliverables | Übergeordneter Vorgang |
| --- | --- | --- | --- | --- | --- | --- | --- | --- | --- | --- | --- | --- | --- | --- | --- | --- | --- | --- | --- | --- | --- | --- |
| 1 | 1 | **Wettbewerbsanalyse** |  | 3.83d | 2014-06-02 A | 2014-06-12 A |  | 100% |  | 2014-06-02 | 2014-06-12 | 3.83d | 2014-06-02 | 2014-06-12 |  |  |  |  | 20.8h | 20.8h |  |  |
| 2 | 1.1 | Alternativen recherchieren |  | 2d | 2014-06-02 A | 2014-06-05 A |  | 100% |  | 2014-06-02 | 2014-06-05 | 2d | 2014-06-02 | 2014-06-05 |  |  |  | Tobias [50%] | 8h | 8h | Wettbewerbsanalyse: Feature Matrix | Wettbewerbsanalyse |
| 3 | 1.2 | Mediatheken explorieren |  | 2d | 2014-06-05 A | 2014-06-12 A | 2 | 100% |  | 2014-06-05 | 2014-06-12 | 2d | 2014-06-05 | 2014-06-12 |  |  |  | Tobias [50%] | 8h | 8h | Wettbewerbsanalyse: Feature Matrix |  |
| 4 | 1.3 | Einschätzung der Mediatheken |  | 1d | 2014-06-02 A | 2014-06-03 A |  | 100% |  | 2014-06-02 | 2014-06-03 | 1d | 2014-06-02 | 2014-06-03 |  |  |  | David [50%] | 4h | 4h | Feature Matrix Mediatheken |  |
| 5 | 1.4 | Featurematrix erstellen |  | 0.2d | 2014-06-12 A | 2014-06-12 A | 3, 4 | 100% |  | 2014-06-12 | 2014-06-12 | 0.2d | 2014-06-12 | 2014-06-12 |  |  |  | Tobias [50%] | 0.8h | 0.8h |  |  |
| 6 | 1.5 | Featurematrix abgeschlossen | milestone | 0d | 2014-06-12 A | 2014-06-12 A | 5 | 100% |  | 2014-06-12 | 2014-06-12 | 0d | 2014-06-12 | 2014-06-12 |  |  |  | Tobias |  |  |  |  |
| 7 | 2 | **Mediatheken einbinden** |  | 20.18d | 2014-06-12 A | 2014-08-21 | 1 | 45% | 11.07d |  |  |  | 2014-06-12 | 2014-09-05 | 0d |  |  |  | 201.8h | 91.5h |  |  |
| 8 | 2.1 | API's recherchieren |  | 2d | 2014-06-12 A | 2014-06-19 A |  | 100% |  |  |  |  | 2014-06-12 | 2014-06-19 |  |  |  | David [50%]; Lukas [50%] | 16h | 16h | How-To Mediatheken-Einbinden | Mediatheken einbinden |
| 9 | 2.2 | **"ZDF" Mediathek** |  | 18d | 2014-06-19 A | 2014-08-21 | 8 | 44% | 10.03d |  |  |  | 2014-06-19 | 2014-09-05 | 0d |  |  |  | 68.4h | 27.4h |  |  |
| 10 | 2.2.1 | **Suchen in "ZDF"** |  | 6.95d | 2014-06-19 A | 2014-07-15 |  | 69% | 2.14d |  |  |  | 2014-06-19 | 2014-07-15 | 11.05d |  |  |  | 34h | 18h |  |  |
| 11 | 2.2.1.1 | Exploration der Suchfunktionen von "ZDF" |  | 0.5d | 2014-06-19 A | 2014-06-19 A |  | 100% |  |  |  |  | 2014-06-19 | 2014-06-23 |  |  |  | David [50%] | 2h | 2h |  | "ZDF" Mediathek |
| 12 | 2.2.1.2 | Entwicklung Queries |  | 1.5d | 2014-06-23 A | 2014-06-26 A | 11 | 100% |  |  |  |  | 2014-06-23 | 2014-07-01 |  |  |  | David [50%] | 6h | 6h |  |  |
| 13 | 2.2.1.3 | Parsen der Ergebnisse |  | 1.5d | 2014-06-26 A | 2014-07-01 A | 12 | 100% |  |  |  |  | 2014-07-01 | 2014-07-08 |  |  |  | David [50%] | 6h | 6h |  | "ZDF" Mediathek |
| 14 | 2.2.1.4 | Filterung der Suchergebnisse |  | 2d | 2014-07-01 | 2014-07-08 | 13 |  |  |  |  |  |  |  | 13d |  |  | David | 16h |  |  | "ZDF" Mediathek |
| 15 | 2.2.1.5 | Darstellung der Ergebnisse |  | 1d | 2014-07-08 A | 2014-07-10 A | 13 | 100% |  |  |  |  | 2014-07-08 | 2014-07-15 |  |  |  | Lukas [50%] | 4h | 4h |  |  |
| 16 | 2.2.1.6 | Suchen in "ZDF" Mediathek abgeschlossen | milestone | 0d | 2014-07-15 A | 2014-07-15 A | 15 | 100% |  |  |  |  | 2014-07-15 | 2014-07-15 |  |  |  | David |  |  |  |  |
| 17 | 2.2.2 | **Browsing in "ZDF"** |  | 18d | 2014-06-19 A | 2014-08-21 | 8 | 12% | 15.91d |  |  |  | 2014-06-19 | 2014-09-05 | 0d |  |  |  | 18.4h | 3.2h |  |  |
| 18 | 2.2.2.1 | Exploration der IA der Mediathek |  | 0.3d | 2014-06-19 A | 2014-06-19 A |  | 100% |  |  |  |  | 2014-06-19 | 2014-06-30 |  |  |  | Lukas | 2.4h | 2.4h |  |  |
| 19 | 2.2.2.2 | Entwicklung Queries |  | 2d | 2014-08-07 | 2014-08-14 | 18 |  |  |  |  |  | 2014-08-28 | 2014-09-03 | 0d |  | as late as possible | David [50%] | 8h |  |  |  |
| 20 | 2.2.2.3 | Parsen der Ergebnisse |  | 2d | 2014-08-14 A | 2014-08-21 | 19 | 10% | 1.8d |  |  |  | 2014-09-03 | 2014-09-05 | 0d |  |  | David [50%] | 8h | 0.8h |  |  |
| 21 | 2.2.2.4 | Browsing in "ZDF" Mediatheken abgeschlossen | milestone | 0d | 2014-08-21 A | 2014-08-21 | 20 | 10% | 0d |  |  |  | 2014-09-05 | 2014-09-05 | 0d |  |  | David |  |  |  |  |
| 22 | 2.2.3 | **Streamen von "ZDF"** |  | 3.55d | 2014-07-15 A | 2014-07-28 | 16 | 42% | 2.07d |  |  |  | 2014-07-15 | 2014-08-05 | 0.93d | 0.5d |  |  | 12h | 5h |  |  |
| 23 | 2.2.3.1 | Streaming |  | 2d | 2014-07-15 A | 2014-07-21 |  | 50% | 1d |  |  |  | 2014-07-15 | 2014-07-31 | 1.5d | 1d |  | David [50%] | 8h | 4h |  |  |
| 24 | 2.2.3.2 | Dateitypen / Player & Grundlagen |  | 1d | 2014-07-24 A | 2014-07-28 | 23 | 25% | 0.75d |  |  |  | 2014-07-31 | 2014-08-05 | 0.93d |  |  | David [50%] | 4h | 1h |  |  |
| 25 | 2.2.4 | Streaming in Seite einbinden |  | 1d | 2014-07-29 A | 2014-07-31 | 22 | 30% | 0.7d |  |  |  | 2014-08-05 | 2014-08-07 | 2.08d |  |  | Lukas [50%] | 4h | 1.2h |  |  |
| 26 | 2.2.5 | "ZDF" Mediathek eingebunden | milestone | 0d | 2014-08-07 A | 2014-08-07 | 25 | 75% | 0d |  |  |  | 2014-08-07 | 2014-08-07 | 0d |  |  | David |  |  |  |  |

| ID | WBS | Task | Type | Duration | Start | Finish | Predecessors | Complete | Remaining | Baseline 1 start | Baseline 1 finish | Total slack | Free slack | Constraint | Resources | Work | Actual work | Übergeordneter Vorgang |
| --- | --- | --- | --- | --- | --- | --- | --- | --- | --- | --- | --- | --- | --- | --- | --- | --- | --- | --- |
| 27 | 2.3 | **"ARD" Mediathek** |  | 12.5d | 2014-06-19 A | 2014-08-01 | 8 | 63% | 4.61d | 2014-06-19 | 2014-09-03 | 5.5d | 3.83d |  |  | 51h | 32.2h |  |
| 28 | 2.3.1 | **Suchen in "ARD"** |  | 7.15d | 2014-06-19 A | 2014-07-15 |  | 54% | 3.28d | 2014-06-19 | 2014-07-15 | 0.35d |  |  |  | 21.8h | 11.8h |  |
| 29 | 2.3.1.1 | Exploration der Suchfunktionen von "ARD" |  | 0.5d | 2014-06-19 A | 2014-06-24 A |  | 100% |  | 2014-06-19 | 2014-06-23 |  |  |  | Lukas [50%] | 2h | 2h | "ARD" Mediathek |
| 30 | 2.3.1.2 | Entwicklung Queries |  | 0.95d | 2014-06-23 A | 2014-07-03 A | 29 | 100% |  | 2014-06-23 | 2014-07-01 |  |  |  | Lukas [50%] | 3.8h | 3.8h | "ARD" Mediathek |
| 31 | 2.3.1.3 | Parsen der Ergebnisse |  | 1d | 2014-07-03 A | 2014-07-07 A | 30 | 100% |  | 2014-07-01 | 2014-07-08 |  |  |  | Lukas [50%] | 4h | 4h |  |
| 32 | 2.3.1.4 | Filterung der Suchergebnisse |  | 2d | 2014-07-07 | 2014-07-10 | 31 |  |  |  |  | 0d |  |  | Lukas [50%] | 8h |  | "ARD" Mediathek |
| 33 | 2.3.1.5 | Darstellung der Ergebnisse |  | 1d | 2014-07-08 A | 2014-07-14 | 32 | 50% | 0.5d | 2014-07-08 | 2014-07-15 | 1d | 0.65d |  | Lukas [50%] | 4h | 2h |  |
| 34 | 2.3.1.6 | Suchen in "ARD" Mediathek abgeschlossen | milestone | 0d | 2014-07-15 A | 2014-07-15 | 33 | 35% | 0d | 2014-07-15 | 2014-07-15 | 0.35d |  |  | Lukas |  |  |  |
| 35 | 2.3.2 | **Browsing in "ARD"** |  | 9.5d | 2014-06-19 A | 2014-07-22 |  | 99% | 0d | 2014-06-19 | 2014-09-03 | 8.5d |  |  |  | 13.2h | 13.2h |  |
| 36 | 2.3.2.1 | Exploration der IA's der Mediathek |  | 0.3d | 2014-06-19 A | 2014-06-19 A |  | 100% |  | 2014-06-19 | 2014-06-23 |  |  |  | Lukas [50%] | 1.2h | 1.2h |  |
| 37 | 2.3.2.2 | Entwicklung Queries |  | 1.5d | 2014-07-08 A | 2014-07-14 A | 36 | 100% |  | 2014-08-21 | 2014-09-01 |  |  | start no earlier than 2014-07-08 | Lukas [50%] | 6h | 6h |  |
| 38 | 2.3.2.3 | Parsen der Ergebnisse |  | 1.5d | 2014-07-17 A | 2014-07-22 A | 37 | 100% |  | 2014-09-01 | 2014-09-03 |  |  |  | Lukas [50%] | 6h | 6h |  |
| 39 | 2.3.2.4 | Browsing in "ARD" Mediathek abgeschlossen | milestone | 0d | 2014-07-22 A | 2014-07-22 | 38 | 50% | 0d | 2014-09-03 | 2014-09-03 | 8.5d |  |  | Lukas |  |  |  |
| 40 | 2.3.3 | **Streamen von "ARD"** |  | 3d | 2014-07-17 A | 2014-07-24 | 34 | 50% | 1.5d | 2014-07-15 | 2014-08-05 | 0.5d | 0d |  |  | 12h | 6h |  |
| 41 | 2.3.3.1 | Streaming |  | 2d | 2014-07-17 A | 2014-07-22 |  | 75% | 0.5d | 2014-07-15 | 2014-07-31 | 1.05d | 0d |  | Lukas [50%] | 8h | 6h |  |
| 42 | 2.3.3.2 | Dateitypen / Player & Grundlagen |  | 1d | 2014-07-22 | 2014-07-24 | 41 |  |  | 2014-07-31 | 2014-08-05 | 0.5d |  |  | Lukas [50%] | 4h |  |  |
| 43 | 2.3.4 | Streaming in Seite einbinden |  | 1d | 2014-07-29 A | 2014-07-31 | 40 | 30% | 0.7d | 2014-08-05 | 2014-08-07 | 0.62d |  |  | Lukas [50%] | 4h | 1.2h |  |
| 44 | 2.3.5 | "ARD" Mediathek eingebunden | milestone | 0d | 2014-08-01 A | 2014-08-01 | 43 | 50% | 0d | 2014-08-07 | 2014-08-07 | 0d |  |  | Lukas |  |  |  |
| 45 | 2.4 | **"BR" Mediathek** |  | 4.75d | 2014-08-04 A | 2014-08-19 | 44 | 38% | 2.95d |  |  | 0.75d | 0d |  |  | 36.8h | 13.1h |  |
| 46 | 2.4.1 | **Suchen in "BR"** |  | 4.75d | 2014-08-04 A | 2014-08-19 |  | 31% | 3.27d |  |  | 0.75d |  |  |  | 14h | 4.5h |  |
| 47 | 2.4.1.1 | Exploration der Suchfunktionen von "BR" |  | 0.3d | 2014-08-04 A | 2014-08-04 A |  | 100% |  |  |  |  |  | start no earlier than 2014-08-04 | Lukas [50%] | 1.2h | 1.2h |  |
| 48 | 2.4.1.2 | Entwicklung Queries |  | 0.4d | 2014-08-05 A | 2014-08-05 A | 47 | 100% |  |  |  |  |  |  | Lukas [50%] | 1.6h | 1.6h |  |
| 49 | 2.4.1.3 | Parsen der Ergebnisse |  | 0.3d | 2014-08-07 A | 2014-08-07 A | 48 | 100% |  |  |  |  |  |  | Lukas [50%] | 1.2h | 1.2h |  |
| 50 | 2.4.1.4 | Filterung der Suchergebnisse |  | 2d | 2014-08-07 | 2014-08-14 | 49 |  |  |  |  | 0.57d |  |  | Lukas [50%] | 8h |  |  |
| 51 | 2.4.1.5 | Darstellung der Ergebnisse |  | 1d | 2014-08-18 A | 2014-08-19 | 50 | 25% | 0.75d |  |  | 0.75d | 0d |  | Lukas [25%] | 2h | 0.5h |  |
| 52 | 2.4.1.6 | Suchen in "BR" Mediathek abgeschlossen | milestone | 0d | 2014-08-19 A | 2014-08-19 | 51 | 10% | 0d |  |  | 0.75d |  |  | Lukas |  |  |  |

| ID | WBS | Task | Type | Duration | Start | Finish | Predecessors | Complete | Remaining | Baseline 1 start | Baseline 1 finish | Total slack | Free slack | Resources | Work | Actual work | Übergeordneter Vorgang |
| --- | --- | --- | --- | --- | --- | --- | --- | --- | --- | --- | --- | --- | --- | --- | --- | --- | --- |
| 53 | 2.4.2 | **Browsing in "BR"** |  | 2d | 2014-08-04 A | 2014-08-11 A |  | 100% |  |  |  |  |  |  | 2.8h | 2.8h |  |
| 54 | 2.4.2.1 | Exploration der IA's der Mediathek |  | 0.5d | 2014-08-04 A | 2014-08-04 A |  | 100% |  |  |  |  |  | Lukas [50%] | 2h | 2h |  |
| 55 | 2.4.2.2 | Entwicklung Queries |  | 0.1d | 2014-08-05 A | 2014-08-05 A | 54 | 100% |  |  |  |  |  | Lukas [50%] | 0.4h | 0.4h |  |
| 56 | 2.4.2.3 | Parsen der Ergebnisse |  | 0.1d | 2014-08-07 A | 2014-08-07 A | 55 | 100% |  |  |  |  |  | Lukas [50%] | 0.4h | 0.4h |  |
| 57 | 2.4.2.4 | Browsing in "BR" Mediathek abgeschlossen | milestone | 0d | 2014-08-11 A | 2014-08-11 A | 56 | 100% |  |  |  |  |  | Lukas |  |  |  |
| 58 | 2.4.3 | **Streamen von "BR"** |  | 2.5d | 2014-08-04 A | 2014-08-12 |  | 42% | 1.46d |  |  | 0d |  |  | 12h | 5h |  |
| 59 | 2.4.3.1 | Streaming |  | 2d | 2014-08-04 A | 2014-08-07 |  | 50% | 1d |  |  | 0.12d | 0d | Lukas [50%] | 8h | 4h |  |
| 60 | 2.4.3.2 | Dateitypen / Player & Grundlagen |  | 1d | 2014-08-07 A | 2014-08-12 | 59 | 25% | 0.75d |  |  | 0d |  | Lukas [50%] | 4h | 1h |  |
| 61 | 2.4.4 | Streaming in Seite einbinden |  | 1d | 2014-08-12 A | 2014-08-14 | 58 | 10% | 0.9d |  |  | 2d |  | Lukas | 8h | 0.8h |  |
| 62 | 2.5 | **"Arte" Mediathek** |  | 2.58d | 2014-08-07 A | 2014-08-19 | 26 | 3% | 2.49d |  |  | 1.1d | 0d |  | 25.6h | 0.8h |  |
| 63 | 2.5.1 | **Suchen in "Arte"** |  | 2.58d | 2014-08-07 | 2014-08-19 |  |  |  |  |  | 0.68d |  |  | 12.8h |  |  |
| 64 | 2.5.1.1 | Exploration der Suchfunktionen von "Arte" |  | 0.2d | 2014-08-07 | 2014-08-07 |  |  |  |  |  | 0.68d | 0d | David [50%] | 0.8h |  |  |
| 65 | 2.5.1.2 | Entwicklung Queries |  | 1d | 2014-08-07 | 2014-08-12 | 64 |  |  |  |  | 0.7d | 0d | David [50%] | 4h |  |  |
| 66 | 2.5.1.3 | Parsen der Ergebnisse |  | 0.7d | 2014-08-12 | 2014-08-14 | 65 |  |  |  |  | 0.53d | 0d | David [50%] | 2.8h |  |  |
| 67 | 2.5.1.4 | Filterung der Suchergebnisse |  | 1d | 2014-08-14 | 2014-08-18 | 66 |  |  |  |  | 0.53d | 0d | David [50%] | 4h |  |  |
| 68 | 2.5.1.5 | Darstellung der Ergebnisse |  | 0.3d | 2014-08-18 | 2014-08-19 | 67 |  |  |  |  | 1.1d | 0d | David [50%] | 1.2h |  |  |
| 69 | 2.5.1.6 | Suchen in "Arte" Mediathek abgeschlossen | milestone | 0d | 2014-08-19 | 2014-08-19 | 68 |  |  |  |  | 1.1d |  | David |  |  |  |
| 70 | 2.5.2 | **Browsing in "Arte"** |  | 1.55d | 2014-08-07 A | 2014-08-14 |  | 11% | 1.38d |  |  | 2.12d |  |  | 7.2h | 0.8h |  |
| 71 | 2.5.2.1 | Exploration der IA's der Mediathek |  | 0.2d | 2014-08-07 A | 2014-08-07 A |  | 100% |  |  |  |  |  | David [50%] | 0.8h | 0.8h |  |
| 72 | 2.5.2.2 | Entwicklung Queries |  | 1d | 2014-08-07 | 2014-08-12 | 71 |  |  |  |  | 2d | 0d | David [50%] | 4h |  |  |
| 73 | 2.5.2.3 | Parsen der Ergebnisse |  | 0.6d | 2014-08-12 | 2014-08-14 | 72 |  |  |  |  | 2.12d | 0d | David [50%] | 2.4h |  |  |
| 74 | 2.5.2.4 | Browsing in "Arte" Mediathek abgeschlossen | milestone | 0d | 2014-08-14 | 2014-08-14 | 73 |  |  |  |  | 2.12d |  | David |  |  |  |
| 75 | 2.5.3 | **Streamen von "Arte"** |  | 1.02d | 2014-08-07 | 2014-08-12 |  |  |  |  |  | 2.17d |  |  | 5.6h |  |  |
| 76 | 2.5.3.1 | Streaming |  | 1d | 2014-08-07 | 2014-08-12 |  |  |  |  |  | 2.17d | 0d | David [50%] | 4h |  |  |
| 77 | 2.5.3.2 | Dateitypen / Player & Grundlagen |  | 0.4d | 2014-08-12 | 2014-08-12 | 76 |  |  |  |  | 2.55d |  | David [50%] | 1.6h |  |  |
| 78 | 2.6 | Kombination Suchalgorithmen |  | 1d | 2014-08-14 A | 2014-08-21 | 27, 45, 9, 62 | 50% | 0.5d | 2014-09-03 | 2014-09-05 | 0d |  | Lukas [50%] | 4h | 2h | Mediatheken einbinden |

| ID | WBS | Task | Type | Duration | Start | Finish | Predecessors | Complete | Remaining | Baseline start | Baseline finish | Baseline duration | Baseline 1 start | Baseline 1 finish | Total slack | Free slack | Constraint | Resources | Work | Actual work | Übergeordneter Vorgang | Deliverables |
| --- | --- | --- | --- | --- | --- | --- | --- | --- | --- | --- | --- | --- | --- | --- | --- | --- | --- | --- | --- | --- | --- | --- |
| 79 | 3 | **Grundgerüst der Seite** |  | 3.5d | 2014-06-02 A | 2014-06-12 A |  | 100% |  | 2014-06-02 | 2014-06-12 | 3.5d | 2014-06-02 | 2014-06-12 |  |  |  |  | 18h | 18h |  |  |
| 80 | 3.1 | Datenbankschema |  | 0.5d | 2014-06-02 A | 2014-06-02 A |  | 100% |  | 2014-06-02 | 2014-06-02 | 0.5d | 2014-06-02 | 2014-06-02 |  |  |  | Lukas [50%] | 2h | 2h | Grundgerüst |  |
| 81 | 3.2 | PHP Framework |  | 2.5d | 2014-06-03 A | 2014-06-10 A | 80 | 100% |  | 2014-06-03 | 2014-06-09 | 2d | 2014-06-03 | 2014-06-10 |  |  |  | Lukas [50%] | 10h | 10h |  |  |
| 82 | 3.3 | User Login |  | 1.5d | 2014-06-09 A | 2014-06-12 A | 81 | 100% |  | 2014-06-09 | 2014-06-12 | 1.5d | 2014-06-09 | 2014-06-12 |  |  |  | Lukas [50%] | 6h | 6h |  |  |
| 83 | 4 | **Interface** |  | 24d | 2014-06-02 A | 2014-08-21 |  | 28% | 17.38d | 2014-06-02 | 2014-09-04 | 29d | 2014-06-02 | 2014-09-05 | 0d |  |  |  | 261.5h | 109h |  |  |
| 84 | 4.1 | Sketching |  | 2d | 2014-06-02 A | 2014-06-05 A |  | 100% |  | 2014-06-02 | 2014-06-05 | 2d | 2014-06-02 | 2014-06-05 |  |  |  | David [50%]; Felix [50%]; Lukas [50%]; Tobias [50%] | 32h | 32h | Interface |  |
| 85 | 4.2 | UI Entwürfe abgschlossen | milestone | 0d | 2014-06-05 A | 2014-06-05 A | 84 | 100% |  | 2014-06-05 | 2014-06-05 | 0d | 2014-06-05 | 2014-06-05 |  |  |  | Felix |  |  |  |  |
| 86 | 4.3 | **Prototyping** |  | 4.62d | 2014-06-05 A | 2014-06-24 A | 85 | 100% |  |  |  |  | 2014-06-05 | 2014-06-24 |  |  |  |  | 41h | 41h |  |  |
| 87 | 4.3.1 | Axure Prototype erstellen |  | 4d | 2014-06-05 A | 2014-06-19 A |  | 100% |  |  |  |  | 2014-06-05 | 2014-06-19 |  |  |  | Felix [50%]; Tobias [50%] | 32h | 32h | Prototyping |  |
| 88 | 4.3.2 | Prototype testen |  | 0.5d | 2014-06-12 A | 2014-06-12 A | 87 | 100% |  |  |  |  | 2014-06-12 | 2014-06-12 |  |  |  | Felix [50%]; Tobias [50%] | 4h | 4h |  |  |
| 89 | 4.3.3 | Prototype iterieren |  | 0.5d | 2014-06-17 A | 2014-06-17 A | 88 | 100% |  |  |  |  | 2014-06-17 | 2014-06-17 |  |  |  | Felix [50%]; Tobias [50%] | 4h | 4h |  |  |
| 90 | 4.3.4 | Prototype erneut testen |  | 0.5d | 2014-06-24 A | 2014-06-24 A | 89 | 100% |  |  |  |  | 2014-06-24 | 2014-06-24 |  |  |  | Felix [25%]; David [25%]; Tobias [25%] | 1h | 1h |  |  |
| 91 | 4.4 | **Screendesign** |  | 7.5d | 2014-06-24 A | 2014-07-22 | 86 | 47% | 3.95d |  |  |  | 2014-06-24 | 2014-07-21 | 9.5d |  |  |  | 72.5h | 36h |  |  |
| 92 | 4.4.1 | Screendesign Startseite |  | 2.5d | 2014-06-24 A | 2014-07-03 |  | 60% | 1d |  |  |  | 2014-06-24 | 2014-07-01 | 0.62d | 0d |  | Felix [50%]; Tobias [50%] | 18h | 12h | Screendesign |  |
| 93 | 4.4.2 | Screendesign Suche |  | 2.5d | 2014-07-01 A | 2014-07-08 | 92 | 60% | 1d |  |  |  | 2014-07-01 | 2014-07-08 | 1d | 0d |  | Felix [50%]; Tobias [50%] | 20h | 12h |  |  |
| 94 | 4.4.3 | Screendesign Persönlicher Bereich |  | 2d | 2014-07-08 | 2014-07-15 | 93 |  |  |  |  |  | 2014-07-08 | 2014-07-14 | 1d | 0d |  | Felix [50%]; Tobias [50%] | 16h |  | Screendesign |  |
| 95 | 4.4.4 | Screendesign Sendungsbereich |  | 2.5d | 2014-07-15 A | 2014-07-22 | 94 | 60% | 1d |  |  |  | 2014-07-15 | 2014-07-21 | 7.5d | 0d |  | Felix [50%]; Tobias [50%] | 18.5h | 12h |  |  |
| 96 | 4.4.5 | Screendesign abgeschlossen | milestone | 0d | 2014-07-22 A | 2014-07-22 | 95 | 50% | 0d |  |  |  | 2014-07-21 | 2014-07-21 | 9.5d |  |  | Felix |  |  |  |  |
| 97 | 4.5 | Logo-Entwurf |  | 1d | 2014-07-22 | 2014-07-24 | 95 |  |  |  |  |  |  |  | 8.45d |  |  | David [25%]; Felix [25%]; Lukas [25%]; Tobias [25%] | 8h |  |  |  |
| 98 | 4.6 | **Technische Umsetzung** |  | 14.62d | 2014-07-03 | 2014-08-21 | 81 |  |  |  |  |  | 2014-07-21 | 2014-09-05 | 0d |  |  |  | 108h |  |  | HTML Grundgerüst |
| 99 | 4.6.1 | **Startseite** |  | 6.62d | 2014-07-03 | 2014-07-28 | 92 |  |  |  |  |  | 2014-07-21 | 2014-08-14 | 0d |  |  |  | 30h |  |  |  |
| 100 | 4.6.1.1 | Beliebte Sendungen |  | 1d | 2014-07-03 | 2014-07-07 |  |  |  |  |  |  | 2014-07-21 | 2014-07-24 | 0.62d | 0d |  | Tobias [75%] | 6h |  | Erstellung der Templates |  |
| 101 | 4.6.1.2 | Neue Sendungen |  | 2d | 2014-07-07 | 2014-07-10 | 100 |  |  |  |  |  | 2014-07-28 | 2014-07-31 | 0.7d | 0d |  | Felix [50%] | 8h |  |  |  |
| 102 | 4.6.1.3 | Kategorisierung |  | 2d | 2014-07-14 | 2014-07-17 | 101 |  |  |  |  |  | 2014-07-31 | 2014-08-07 | 0.57d | 0d |  | Felix [50%] | 8h |  |  |  |
| 103 | 4.6.1.4 | Filterung |  | 2d | 2014-07-17 | 2014-07-24 | 102 |  |  |  |  |  | 2014-08-07 | 2014-08-14 | 0.5d |  |  | Felix [50%] | 8h |  |  |  |
| 104 | 4.6.1.5 | Grundgerüst der Startseite abgeschlossen | milestone | 0d | 2014-07-28 | 2014-07-28 | 103 |  |  |  |  |  | 2014-08-14 | 2014-08-14 | 0d |  | as late as possible | Felix; Lukas; David; Tobias |  |  |  |  |
| 105 | 4.6.2 | Suche |  | 2d | 2014-07-08 | 2014-07-15 | 93 |  |  |  |  |  | 2014-07-21 | 2014-07-24 | 11d |  |  | Tobias [50%] | 8h |  |  |  |
| 106 | 4.6.3 | Sendung-Detailsseite |  | 2d | 2014-07-22 | 2014-07-28 | 95 |  |  |  |  |  | 2014-07-21 | 2014-07-24 | 7.5d |  |  | Tobias [50%] | 8h |  |  |  |

| ID | WBS | Task | Type | Duration | Start | Finish | Predecessors | Baseline 1 start | Baseline 1 finish | Total slack | Free slack | Constraint | Resources | Work | Übergeordneter Vorgang | Deliverables |
| --- | --- | --- | --- | --- | --- | --- | --- | --- | --- | --- | --- | --- | --- | --- | --- | --- |
| 107 | 4.6.4 | **Persönlicher Bereich** |  | 11.25d | 2014-07-15 | 2014-08-21 | 94 | 2014-07-21 | 2014-09-05 | 0d |  |  |  | 28h |  |  |
| 108 | 4.6.4.1 | Dashboard (Übersicht) |  | 1d | 2014-07-15 | 2014-07-17 |  | 2014-07-21 | 2014-07-22 | 5.62d | 0d |  | Tobias | 8h | Programmierung |  |
| 109 | 4.6.4.2 | Reminder & Abos |  | 2d | 2014-07-17 | 2014-07-24 | 108 | 2014-07-22 | 2014-07-29 | 5.62d | 0.12d |  | Felix [50%] | 8h |  |  |
| 110 | 4.6.4.3 | Playlisten |  | 2d | 2014-07-24 | 2014-07-31 | 109 | 2014-07-29 | 2014-08-05 | 5.58d | 0d |  | Tobias [50%] | 8h |  |  |
| 111 | 4.6.4.4 | Merkliste |  | 1d | 2014-07-31 | 2014-08-04 | 110 | 2014-08-05 | 2014-08-11 | 5.58d |  |  | Tobias [50%] | 4h |  |  |
| 112 | 4.6.4.5 | Grundgerüst des persönlichen Bereichs abgeschlossen | milestone | 0d | 2014-08-21 | 2014-08-21 | 111 | 2014-09-05 | 2014-09-05 | 0d |  | as late as possible | Felix; Lukas; David; Tobias |  |  |  |
| 113 | 4.6.5 | **Design-Umsetzung** |  | 5.33d | 2014-07-28 | 2014-08-14 |  | 2014-08-14 | 2014-09-02 | 0d |  |  |  | 22h |  | CSS |
| 114 | 4.6.5.1 | Umsetzung Startseite |  | 2.5d | 2014-07-28 | 2014-08-05 | 104 | 2014-08-14 | 2014-08-21 | 0d |  |  | Felix [50%] | 10h | Design-Umsetzung |  |
| 115 | 4.6.5.2 | Umsetzung Sendung-Detailseite |  | 2d | 2014-08-05 | 2014-08-11 | 114 | 2014-08-21 | 2014-08-28 | 0d |  |  | Felix [50%] | 8h |  |  |
| 116 | 4.6.5.3 | Umsetzung Persönlicher Bereich |  | 1d | 2014-08-11 | 2014-08-14 | 115 | 2014-08-28 | 2014-09-02 | 0d |  |  | Tobias [50%] | 4h |  |  |
| 117 | 4.6.6 | Anpassungen (Design) |  | 2d | 2014-08-14 | 2014-08-19 | 116 | 2014-09-02 | 2014-09-04 | 0d |  |  | Tobias [50%] | 8h |  |  |
| 118 | 4.6.7 | Browserspezifische Anpassungen |  | 1d | 2014-08-19 | 2014-08-21 | 117 | 2014-09-04 | 2014-09-05 | 0d |  |  | Tobias [50%] | 4h |  |  |
| 119 | 4.6.8 | Interface abgeschlossen | milestone | 0d | 2014-08-21 | 2014-08-21 | 118 | 2014-09-05 | 2014-09-05 | 0d |  |  | Felix |  |  |  |
| 120 | 5 | **Testing** |  | 2.7d | 2014-08-21 | 2014-09-01 | 7, 83 | 2014-09-05 | 2014-09-10 | 0d |  |  |  | 92h |  |  |
| 121 | 5.1 | Softwaretests |  | 2d | 2014-08-21 | 2014-08-28 |  | 2014-09-05 | 2014-09-09 | 0d |  |  | David; Felix; Lukas; Tobias | 62h | Testing |  |
| 122 | 5.2 | Usability-Test |  | 1d | 2014-08-28 | 2014-09-01 | 121 | 2014-09-09 | 2014-09-10 | 0d |  |  | David; Felix; Lukas; Tobias | 30h |  |  |
| 123 | 6 | Projektabschluss | milestone | 0d | 2014-09-01 | 2014-09-01 | 120 |  |  | 0d |  |  | Lukas; David; Felix; Tobias |  |  |  |
