# Projektplan_11

Schedule from MS Project, 2014-06-02 to 2014-09-09, status date 2014-08-12, A marks actual dates.

## Calendars

- Standard: Mon-Fri 08:00-12:00, 13:00-17:00; Sat-Sun off. Exceptions (off unless hours are given): 2014-05-20 to 2014-08-30 (Frei, recurring), 2014-08-18 08:00-12:00, 13:00-17:00.

## Resources

| Resource |
| --- |
| David |
| Felix |
| Tobias |
| Lukas |

## Schedule

| ID | WBS | Task | Type | Duration | Start | Finish | Predecessors | Complete | Baseline start | Baseline finish | Baseline duration | Baseline 1 start | Baseline 1 finish | Constraint | Resources | Work | Actual work | Deliverables | Übergeordneter Vorgang |
| --- | --- | --- | --- | --- | --- | --- | --- | --- | --- | --- | --- | --- | --- | --- | --- | --- | --- | --- | --- |
| 1 | 1 | **Wettbewerbsanalyse** |  | 3.83d | 2014-06-02 A | 2014-06-12 A |  | 100% | 2014-06-02 | 2014-06-12 | 3.83d | 2014-06-02 | 2014-06-12 |  |  | 20.8h | 20.8h |  |  |
| 2 | 1.1 | Alternativen recherchieren |  | 2d | 2014-06-02 A | 2014-06-05 A |  | 100% | 2014-06-02 | 2014-06-05 | 2d | 2014-06-02 | 2014-06-05 |  | Tobias [50%] | 8h | 8h | Wettbewerbsanalyse: Feature Matrix | Wettbewerbsanalyse |
| 3 | 1.2 | Mediatheken explorieren |  | 2d | 2014-06-05 A | 2014-06-12 A | 2 | 100% | 2014-06-05 | 2014-06-12 | 2d | 2014-06-05 | 2014-06-12 |  | Tobias [50%] | 8h | 8h | Wettbewerbsanalyse: Feature Matrix |  |
| 4 | 1.3 | Einschätzung der Mediatheken |  | 1d | 2014-06-02 A | 2014-06-03 A |  | 100% | 2014-06-02 | 2014-06-03 | 1d | 2014-06-02 | 2014-06-03 |  | David [50%] | 4h | 4h | Feature Matrix Mediatheken |  |
| 5 | 1.4 | Featurematrix erstellen |  | 0.2d | 2014-06-12 A | 2014-06-12 A | 3, 4 | 100% | 2014-06-12 | 2014-06-12 | 0.2d | 2014-06-12 | 2014-06-12 |  | Tobias [50%] | 0.8h | 0.8h |  |  |
| 6 | 1.5 | Featurematrix abgeschlossen | milestone | 0d | 2014-06-12 A | 2014-06-12 A | 5 | 100% | 2014-06-12 | 2014-06-12 | 0d | 2014-06-12 | 2014-06-12 |  | Tobias |  |  |  |  |
| 7 | 2 | **Mediatheken einbinden** |  | 25.36d | 2014-06-12 A | 2014-09-03 A | 1 | 100% |  |  |  | 2014-06-12 | 2014-09-05 |  |  | 192.84h | 192.84h |  |  |
| 8 | 2.1 | API's recherchieren |  | 2d | 2014-06-12 A | 2014-06-19 A |  | 100% |  |  |  | 2014-06-12 | 2014-06-19 |  | David [50%]; Lukas [50%] | 16h | 16h | How-To Mediatheken-Einbinden | Mediatheken einbinden |
| 9 | 2.2 | **"ZDF" Mediathek** |  | 19d | 2014-06-19 A | 2014-08-21 A | 8 | 100% |  |  |  | 2014-06-19 | 2014-09-05 |  |  | 60.4h | 60.4h |  |  |
| 10 | 2.2.1 | **Suchen in "ZDF"** |  | 6.95d | 2014-06-19 A | 2014-07-15 A |  | 100% |  |  |  | 2014-06-19 | 2014-07-15 |  |  | 34h | 34h |  |  |
| 11 | 2.2.1.1 | Exploration der Suchfunktionen von "ZDF" |  | 0.5d | 2014-06-19 A | 2014-06-19 A |  | 100% |  |  |  | 2014-06-19 | 2014-06-23 |  | David [50%] | 2h | 2h |  | "ZDF" Mediathek |
| 12 | 2.2.1.2 | Entwicklung Queries |  | 1.5d | 2014-06-23 A | 2014-06-26 A | 11 | 100% |  |  |  | 2014-06-23 | 2014-07-01 |  | David [50%] | 6h | 6h |  |  |
| 13 | 2.2.1.3 | Parsen der Ergebnisse |  | 1.5d | 2014-06-26 A | 2014-07-01 A | 12 | 100% |  |  |  | 2014-07-01 | 2014-07-08 |  | David [50%] | 6h | 6h |  | "ZDF" Mediathek |
| 14 | 2.2.1.4 | Filterung der Suchergebnisse |  | 2d | 2014-07-01 A | 2014-07-08 A | 13 | 100% |  |  |  |  |  |  | David | 16h | 16h |  | "ZDF" Mediathek |
| 15 | 2.2.1.5 | Darstellung der Ergebnisse |  | 1d | 2014-07-08 A | 2014-07-10 A | 13 | 100% |  |  |  | 2014-07-08 | 2014-07-15 |  | Lukas [50%] | 4h | 4h |  |  |
| 16 | 2.2.1.6 | Suchen in "ZDF" Mediathek abgeschlossen | milestone | 0d | 2014-07-15 A | 2014-07-15 A | 15 | 100% |  |  |  | 2014-07-15 | 2014-07-15 |  | David |  |  |  |  |
| 17 | 2.2.2 | **Browsing in "ZDF"** |  | 19d | 2014-06-19 A | 2014-08-21 A | 8 | 100% |  |  |  | 2014-06-19 | 2014-09-05 |  |  | 10.4h | 10.4h |  |  |
| 18 | 2.2.2.1 | Exploration der IA der Mediathek |  | 0.3d | 2014-06-19 A | 2014-06-19 A |  | 100% |  |  |  | 2014-06-19 | 2014-06-30 |  | Lukas | 2.4h | 2.4h |  |  |
| 19 | 2.2.2.2 | Entwicklung Queries |  | 1d | 2014-08-12 A | 2014-08-14 A | 18 | 100% |  |  |  | 2014-08-28 | 2014-09-03 | as late as possible | David [50%] | 4h | 4h |  |  |
| 20 | 2.2.2.3 | Parsen der Ergebnisse |  | 1d | 2014-08-14 A | 2014-08-19 A | 19 | 100% |  |  |  | 2014-09-03 | 2014-09-05 |  | David [50%] | 4h | 4h |  |  |
| 21 | 2.2.2.4 | Browsing in "ZDF" Mediatheken abgeschlossen | milestone | 0d | 2014-08-21 A | 2014-08-21 A | 20 | 100% |  |  |  | 2014-09-05 | 2014-09-05 |  | David |  |  |  |  |
| 22 | 2.2.3 | **Streamen von "ZDF"** |  | 3.55d | 2014-07-15 A | 2014-07-28 A | 16 | 100% |  |  |  | 2014-07-15 | 2014-08-05 |  |  | 12h | 12h |  |  |
| 23 | 2.2.3.1 | Streaming |  | 2d | 2014-07-15 A | 2014-07-21 A |  | 100% |  |  |  | 2014-07-15 | 2014-07-31 |  | David [50%] | 8h | 8h |  |  |
| 24 | 2.2.3.2 | Dateitypen / Player & Grundlagen |  | 1d | 2014-07-24 A | 2014-07-28 A | 23 | 100% |  |  |  | 2014-07-31 | 2014-08-05 |  | David [50%] | 4h | 4h |  |  |
| 25 | 2.2.4 | Streaming in Seite einbinden |  | 1d | 2014-07-29 A | 2014-07-31 A | 22 | 100% |  |  |  | 2014-08-05 | 2014-08-07 |  | Lukas [50%] | 4h | 4h |  |  |
| 26 | 2.2.5 | "ZDF" Mediathek eingebunden | milestone | 0d | 2014-08-07 A | 2014-08-07 A | 25 | 100% |  |  |  | 2014-08-07 | 2014-08-07 |  | David |  |  |  |  |

| ID | WBS | Task | Type | Duration | Start | Finish | Predecessors | Complete | Baseline 1 start | Baseline 1 finish | Constraint | Resources | Work | Actual work | Übergeordneter Vorgang |
| --- | --- | --- | --- | --- | --- | --- | --- | --- | --- | --- | --- | --- | --- | --- | --- |
| 27 | 2.3 | **"Das Erste" Mediathek** |  | 12.5d | 2014-06-19 A | 2014-08-01 A | 8 | 100% | 2014-06-19 | 2014-09-03 |  |  | 67h | 67h |  |
| 28 | 2.3.1 | **Suchen in "Das Erste"** |  | 7.15d | 2014-06-19 A | 2014-07-15 A |  | 100% | 2014-06-19 | 2014-07-15 |  |  | 37.8h | 37.8h |  |
| 29 | 2.3.1.1 | Exploration der Suchfunktionen von "ARD" |  | 0.5d | 2014-06-19 A | 2014-06-24 A |  | 100% | 2014-06-19 | 2014-06-23 |  | Lukas [50%] | 2h | 2h | "ARD" Mediathek |
| 30 | 2.3.1.2 | Entwicklung Queries |  | 0.95d | 2014-06-23 A | 2014-07-03 A | 29 | 100% | 2014-06-23 | 2014-07-01 |  | Lukas [50%] | 3.8h | 3.8h | "ARD" Mediathek |
| 31 | 2.3.1.3 | Parsen der Ergebnisse |  | 1d | 2014-07-03 A | 2014-07-07 A | 30 | 100% | 2014-07-01 | 2014-07-08 |  | Lukas [50%] | 4h | 4h |  |
| 32 | 2.3.1.4 | Filterung der Suchergebnisse |  | 2d | 2014-07-07 A | 2014-07-10 A | 31 | 100% |  |  |  | Lukas [50%]; David | 24h | 24h | "ARD" Mediathek |
| 33 | 2.3.1.5 | Darstellung der Ergebnisse |  | 1d | 2014-07-08 A | 2014-07-14 A | 32 | 100% | 2014-07-08 | 2014-07-15 |  | Lukas [50%] | 4h | 4h |  |
| 34 | 2.3.1.6 | Suchen in "ARD" Mediathek abgeschlossen | milestone | 0d | 2014-07-15 A | 2014-07-15 A | 33 | 100% | 2014-07-15 | 2014-07-15 |  | Lukas |  |  |  |
| 35 | 2.3.2 | **Browsing in "Das Erste"** |  | 9.5d | 2014-06-19 A | 2014-07-22 A |  | 100% | 2014-06-19 | 2014-09-03 |  |  | 13.2h | 13.2h |  |
| 36 | 2.3.2.1 | Exploration der IA's der Mediathek |  | 0.3d | 2014-06-19 A | 2014-06-19 A |  | 100% | 2014-06-19 | 2014-06-23 |  | Lukas [50%] | 1.2h | 1.2h |  |
| 37 | 2.3.2.2 | Entwicklung Queries |  | 1.5d | 2014-07-08 A | 2014-07-14 A | 36 | 100% | 2014-08-21 | 2014-09-01 | start no earlier than 2014-07-08 | Lukas [50%] | 6h | 6h |  |
| 38 | 2.3.2.3 | Parsen der Ergebnisse |  | 1.5d | 2014-07-17 A | 2014-07-22 A | 37 | 100% | 2014-09-01 | 2014-09-03 |  | Lukas [50%] | 6h | 6h |  |
| 39 | 2.3.2.4 | Browsing in "ARD" Mediathek abgeschlossen | milestone | 0d | 2014-07-22 A | 2014-07-22 A | 38 | 100% | 2014-09-03 | 2014-09-03 |  | Lukas |  |  |  |
| 40 | 2.3.3 | **Streamen von "Das Erste"** |  | 3d | 2014-07-17 A | 2014-07-24 A | 34 | 100% | 2014-07-15 | 2014-08-05 |  |  | 12h | 12h |  |
| 41 | 2.3.3.1 | Streaming |  | 2d | 2014-07-17 A | 2014-07-22 A |  | 100% | 2014-07-15 | 2014-07-31 |  | Lukas [50%] | 8h | 8h |  |
| 42 | 2.3.3.2 | Dateitypen / Player & Grundlagen |  | 1d | 2014-07-22 A | 2014-07-24 A | 41 | 100% | 2014-07-31 | 2014-08-05 |  | Lukas [50%] | 4h | 4h |  |
| 43 | 2.3.4 | Streaming in Seite einbinden |  | 1d | 2014-07-29 A | 2014-07-31 A | 40 | 100% | 2014-08-05 | 2014-08-07 |  | Lukas [50%] | 4h | 4h |  |
| 44 | 2.3.5 | "ARD" Mediathek eingebunden | milestone | 0d | 2014-08-01 A | 2014-08-01 A | 43 | 100% | 2014-08-07 | 2014-08-07 |  | Lukas |  |  |  |
| 45 | 2.4 | **"BR" Mediathek** |  | 2.68d | 2014-08-04 A | 2014-08-12 A | 44 | 100% |  |  |  |  | 21.44h | 21.44h |  |
| 46 | 2.4.1 | Suchen in "BR" |  | 1.5d | 2014-08-04 A | 2014-08-07 A |  | 100% |  |  |  | David [50%]; Lukas [50%] | 12h | 12h |  |
| 47 | 2.4.2 | Neue Sendungen in "BR" |  | 0.1d | 2014-08-07 A | 2014-08-07 A | 46 | 100% |  |  |  | David | 0.8h | 0.8h |  |
| 48 | 2.4.3 | Rubriken in "BR" |  | 0.1d | 2014-08-04 A | 2014-08-05 A | 47 | 100% |  |  |  | David [50%]; Lukas [50%] | 0.8h | 0.8h |  |
| 49 | 2.4.4 | Filtern in "BR" |  | 0.3d | 2014-08-05 A | 2014-08-05 A | 48 | 100% |  |  |  | David | 2.4h | 2.4h |  |
| 50 | 2.4.5 | Streamen von "BR" |  | 0.5d | 2014-08-11 A | 2014-08-12 A | 49 | 100% |  |  |  | David [50%]; Lukas [50%] | 4h | 4h |  |
| 51 | 2.4.6 | "BR" Mediathek eingebunden |  | 0.18d | 2014-08-12 A | 2014-08-12 A | 50 | 100% |  |  |  | David | 1.44h | 1.44h |  |

| ID | WBS | Task | Type | Duration | Start | Finish | Predecessors | Complete | Baseline 1 start | Baseline 1 finish | Constraint | Resources | Work | Actual work | Übergeordneter Vorgang |
| --- | --- | --- | --- | --- | --- | --- | --- | --- | --- | --- | --- | --- | --- | --- | --- |
| 52 | 2.5 | **"SRF" Mediathek** |  | 7.88d | 2014-08-14 A | 2014-09-03 A | 51 | 100% |  |  |  |  | 11.2h | 11.2h |  |
| 53 | 2.5.1 | Suchen in "SRF" |  | 0.2d | 2014-08-14 A | 2014-08-14 A |  | 100% |  |  |  | David | 1.6h | 1.6h |  |
| 54 | 2.5.2 | Neue Sendungen in "SRF" |  | 0.2d | 2014-08-19 A | 2014-08-19 A | 53 | 100% |  |  |  | David | 1.6h | 1.6h |  |
| 55 | 2.5.3 | Rubriken in "SRF" |  | 0.2d | 2014-08-19 A | 2014-08-19 A | 54 | 100% |  |  |  | David | 1.6h | 1.6h |  |
| 56 | 2.5.4 | Filtern in "SRF" |  | 0.5d | 2014-08-19 A | 2014-08-21 A | 55 | 100% |  |  |  | David | 4h | 4h |  |
| 57 | 2.5.5 | Streamen von "SRF" |  | 0.3d | 2014-09-02 A | 2014-09-02 A | 56 | 100% |  |  |  | David | 2.4h | 2.4h |  |
| 58 | 2.5.6 | "SRF" Mediathek eingebunden | milestone | 0d | 2014-09-03 A | 2014-09-03 A | 57 | 100% |  |  |  | David |  |  |  |
| 59 | 2.6 | **"Arte" Mediathek** |  | 7.62d | 2014-08-07 A | 2014-09-01 A | 26 | 100% |  |  |  |  | 6h | 6h |  |
| 60 | 2.6.1 | Suchen in "Arte" |  | 0.2d | 2014-08-07 A | 2014-08-07 A |  | 100% |  |  |  | David [50%] | 0.8h | 0.8h |  |
| 61 | 2.6.2 | Neue Sendungen in "Arte" |  | 0.3d | 2014-08-12 A | 2014-08-14 A | 60 | 100% |  |  |  | David [50%] | 1.2h | 1.2h |  |
| 62 | 2.6.3 | Rubriken in "Arte" |  | 0.4d | 2014-08-18 A | 2014-08-19 A | 61 | 100% |  |  |  | David [50%] | 1.6h | 1.6h |  |
| 63 | 2.6.4 | Filtern in "Arte" |  | 0.4d | 2014-08-19 A | 2014-08-19 A | 62 | 100% |  |  |  | David [50%] | 1.6h | 1.6h |  |
| 64 | 2.6.5 | Streamen von "Arte" |  | 0.2d | 2014-08-28 A | 2014-08-28 A | 63 | 100% |  |  |  | David [50%] | 0.8h | 0.8h |  |
| 65 | 2.6.6 | "Arte" Mediathek eingebunden | milestone | 0d | 2014-09-01 A | 2014-09-01 A | 64 | 100% |  |  |  | David |  |  |  |
| 66 | 2.7 | **"ORF" Mediathek** |  | 1d | 2014-09-01 A | 2014-09-02 A | 65 | 100% |  |  |  |  | 2h | 2h |  |
| 67 | 2.7.1 | Suchen in "ORF" |  | 0.2d | 2014-09-01 A | 2014-09-01 A |  | 100% |  |  |  | David [25%] | 0.4h | 0.4h |  |
| 68 | 2.7.2 | Neue Sendungen in "ORF" |  | 0.2d | 2014-09-01 A | 2014-09-01 A | 67 | 100% |  |  |  | David [25%] | 0.4h | 0.4h |  |
| 69 | 2.7.3 | Rubriken in "ORF" |  | 0.2d | 2014-09-01 A | 2014-09-02 A | 68 | 100% |  |  |  | David [25%] | 0.4h | 0.4h |  |
| 70 | 2.7.4 | Filtern in "ORF" |  | 0.2d | 2014-09-02 A | 2014-09-02 A | 69 | 100% |  |  |  | David [25%] | 0.4h | 0.4h |  |
| 71 | 2.7.5 | Streamen von "ORF" |  | 0.2d | 2014-09-02 A | 2014-09-02 A | 70 | 100% |  |  |  | David [25%] | 0.4h | 0.4h |  |
| 72 | 2.7.6 | "ORF" Mediathek eingebunden | milestone | 0d | 2014-09-02 A | 2014-09-02 A | 71 | 100% |  |  |  | David |  |  |  |
| 73 | 2.8 | Video JS einbinden |  | 0.8d | 2014-08-18 A | 2014-08-19 A |  | 100% |  |  | start no earlier than 2014-08-18 | Lukas [50%] | 3.2h | 3.2h |  |
| 74 | 2.9 | RTMP mit VideoJS testen |  | 0.4d | 2014-08-19 A | 2014-08-19 A | 73 | 100% |  |  | start no earlier than 2014-08-18 | Lukas [50%] | 1.6h | 1.6h |  |
| 75 | 2.10 | Kombination Suchalgorithmen |  | 1d | 2014-08-14 A | 2014-09-01 A | 27, 45, 9, 59 | 100% | 2014-09-03 | 2014-09-05 |  | Lukas [50%] | 4h | 4h | Mediatheken einbinden |

| ID | WBS | Task | Type | Duration | Start | Finish | Predecessors | Complete | Remaining | Baseline start | Baseline finish | Baseline duration | Baseline 1 start | Baseline 1 finish | Total slack | Constraint | Resources | Work | Actual work | Übergeordneter Vorgang | Deliverables |
| --- | --- | --- | --- | --- | --- | --- | --- | --- | --- | --- | --- | --- | --- | --- | --- | --- | --- | --- | --- | --- | --- |
| 76 | 3 | **Grundgerüst der Seite** |  | 3.5d | 2014-06-02 A | 2014-06-12 A |  | 100% |  | 2014-06-02 | 2014-06-12 | 3.5d | 2014-06-02 | 2014-06-12 |  |  |  | 18h | 18h |  |  |
| 77 | 3.1 | Datenbankschema |  | 0.5d | 2014-06-02 A | 2014-06-02 A |  | 100% |  | 2014-06-02 | 2014-06-02 | 0.5d | 2014-06-02 | 2014-06-02 |  |  | Lukas [50%] | 2h | 2h | Grundgerüst |  |
| 78 | 3.2 | PHP Framework |  | 2.5d | 2014-06-03 A | 2014-06-10 A | 77 | 100% |  | 2014-06-03 | 2014-06-09 | 2d | 2014-06-03 | 2014-06-10 |  |  | Lukas [50%] | 10h | 10h |  |  |
| 79 | 3.3 | User Login |  | 1.5d | 2014-06-09 A | 2014-06-12 A | 78 | 100% |  | 2014-06-09 | 2014-06-12 | 1.5d | 2014-06-09 | 2014-06-12 |  |  | Lukas [50%] | 6h | 6h |  |  |
| 80 | 4 | **Interface** |  | 29.75d | 2014-06-02 A | 2014-09-03 |  | 97% | 0.78d | 2014-06-02 | 2014-09-04 | 29d | 2014-06-02 | 2014-09-05 | 0d |  |  | 236.75h | 231.5h |  |  |
| 81 | 4.1 | Sketching |  | 2d | 2014-06-02 A | 2014-06-05 A |  | 100% |  | 2014-06-02 | 2014-06-05 | 2d | 2014-06-02 | 2014-06-05 |  |  | David [50%]; Felix [50%]; Lukas [50%]; Tobias [50%] | 32h | 32h | Interface |  |
| 82 | 4.2 | UI Entwürfe abgschlossen | milestone | 0d | 2014-06-05 A | 2014-06-05 A | 81 | 100% |  | 2014-06-05 | 2014-06-05 | 0d | 2014-06-05 | 2014-06-05 |  |  | Felix |  |  |  |  |
| 83 | 4.3 | **Prototyping** |  | 4.62d | 2014-06-05 A | 2014-06-24 A | 82 | 100% |  |  |  |  | 2014-06-05 | 2014-06-24 |  |  |  | 41h | 41h |  |  |
| 84 | 4.3.1 | Axure Prototype erstellen |  | 4d | 2014-06-05 A | 2014-06-19 A |  | 100% |  |  |  |  | 2014-06-05 | 2014-06-19 |  |  | Felix [50%]; Tobias [50%] | 32h | 32h | Prototyping |  |
| 85 | 4.3.2 | Prototype testen |  | 0.5d | 2014-06-12 A | 2014-06-12 A | 84 | 100% |  |  |  |  | 2014-06-12 | 2014-06-12 |  |  | Felix [50%]; Tobias [50%] | 4h | 4h |  |  |
| 86 | 4.3.3 | Prototype iterieren |  | 0.5d | 2014-06-17 A | 2014-06-17 A | 85 | 100% |  |  |  |  | 2014-06-17 | 2014-06-17 |  |  | Felix [50%]; Tobias [50%] | 4h | 4h |  |  |
| 87 | 4.3.4 | Prototype erneut testen |  | 0.5d | 2014-06-24 A | 2014-06-24 A | 86 | 100% |  |  |  |  | 2014-06-24 | 2014-06-24 |  |  | Felix [25%]; David [25%]; Tobias [25%] | 1h | 1h |  |  |
| 88 | 4.4 | **Screendesign** |  | 7.5d | 2014-06-24 A | 2014-07-22 A | 83 | 100% |  |  |  |  | 2014-06-24 | 2014-07-21 |  |  |  | 72.5h | 72.5h |  |  |
| 89 | 4.4.1 | Screendesign Startseite |  | 2.5d | 2014-06-24 A | 2014-07-03 A |  | 100% |  |  |  |  | 2014-06-24 | 2014-07-01 |  |  | Felix [50%]; Tobias [50%] | 18h | 18h | Screendesign |  |
| 90 | 4.4.2 | Screendesign Suche |  | 2.5d | 2014-07-01 A | 2014-07-08 A | 89 | 100% |  |  |  |  | 2014-07-01 | 2014-07-08 |  |  | Felix [50%]; Tobias [50%] | 20h | 20h |  |  |
| 91 | 4.4.3 | Screendesign Persönlicher Bereich |  | 2d | 2014-07-08 A | 2014-07-15 A | 90 | 100% |  |  |  |  | 2014-07-08 | 2014-07-14 |  |  | Felix [50%]; Tobias [50%] | 16h | 16h | Screendesign |  |
| 92 | 4.4.4 | Screendesign Sendungsbereich |  | 2.5d | 2014-07-15 A | 2014-07-22 A | 91 | 100% |  |  |  |  | 2014-07-15 | 2014-07-21 |  |  | Felix [50%]; Tobias [50%] | 18.5h | 18.5h |  |  |
| 93 | 4.4.5 | Screendesign abgeschlossen | milestone | 0d | 2014-07-22 A | 2014-07-22 A | 92 | 100% |  |  |  |  | 2014-07-21 | 2014-07-21 |  |  | Felix |  |  |  |  |
| 94 | 4.5 | Logo-Entwurf |  | 0.88d | 2014-08-12 | 2014-08-13 | 92 |  |  |  |  |  |  |  | 7.62d | finish no earlier than 2014-08-13 | David [25%]; Felix [25%]; Tobias [25%] | 5.25h |  |  |  |
| 95 | 4.6 | **Technische Umsetzung** |  | 20.38d | 2014-07-03 A | 2014-09-03 A | 78 | 100% |  |  |  |  | 2014-07-21 | 2014-09-05 |  |  |  | 86h | 86h |  | HTML Grundgerüst |
| 96 | 4.6.1 | **Startseite** |  | 10.62d | 2014-07-03 A | 2014-08-11 A | 89 | 100% |  |  |  |  | 2014-07-21 | 2014-08-14 |  |  |  | 3.2h | 3.2h |  |  |
| 97 | 4.6.1.1 | Slider mit aktuellen Videos der Mediatheken |  | 0.4d | 2014-07-03 A | 2014-07-03 A |  | 100% |  |  |  |  |  |  |  |  | Lukas | 3.2h | 3.2h |  |  |
| 98 | 4.6.1.2 | Grundgerüst der Startseite abgeschlossen | milestone | 0d | 2014-08-11 A | 2014-08-11 A |  | 100% |  |  |  |  | 2014-08-14 | 2014-08-14 |  | as late as possible | Felix; Lukas; David; Tobias |  |  |  |  |
| 99 | 4.6.2 | Suche |  | 2d | 2014-07-08 A | 2014-07-15 A | 90 | 100% |  |  |  |  | 2014-07-21 | 2014-07-24 |  |  | Tobias [50%] | 8h | 8h |  |  |
| 100 | 4.6.3 | Sendung-Detailsseite |  | 2d | 2014-07-22 A | 2014-07-28 A | 92 | 100% |  |  |  |  | 2014-07-21 | 2014-07-24 |  |  | Tobias [50%] | 8h | 8h |  |  |

| ID | WBS | Task | Type | Duration | Start | Finish | Predecessors | Complete | Remaining | Baseline 1 start | Baseline 1 finish | Total slack | Constraint | Resources | Work | Actual work | Übergeordneter Vorgang | Deliverables |
| --- | --- | --- | --- | --- | --- | --- | --- | --- | --- | --- | --- | --- | --- | --- | --- | --- | --- | --- |
| 101 | 4.6.4 | **Persönlicher Bereich** |  | 17d | 2014-07-15 A | 2014-09-03 A | 91 | 100% |  | 2014-07-21 | 2014-09-05 |  |  |  | 32h | 32h |  |  |
| 102 | 4.6.4.1 | Dashboard (Übersicht) |  | 1d | 2014-07-15 A | 2014-07-17 A |  | 100% |  | 2014-07-21 | 2014-07-22 |  |  | Tobias | 8h | 8h | Programmierung |  |
| 103 | 4.6.4.2 | Playlisten |  | 2d | 2014-07-24 A | 2014-07-31 A |  | 100% |  | 2014-07-29 | 2014-08-05 |  |  | Felix [50%]; Lukas [15%] | 16h | 16h |  |  |
| 104 | 4.6.4.3 | Merkliste |  | 1d | 2014-07-31 A | 2014-08-04 A | 103 | 100% |  | 2014-08-05 | 2014-08-11 |  |  | Felix [50%]; Lukas [15%] | 8h | 8h |  |  |
| 105 | 4.6.4.4 | Grundgerüst des persönlichen Bereichs abgeschlossen | milestone | 0d | 2014-09-03 A | 2014-09-03 A | 104 | 100% |  | 2014-09-05 | 2014-09-05 |  | as late as possible | Felix; Lukas; David; Tobias |  |  |  |  |
| 106 | 4.6.5 | **Design-Umsetzung** |  | 5.75d | 2014-08-11 A | 2014-08-26 A |  | 100% |  | 2014-08-14 | 2014-09-02 |  |  |  | 22.8h | 22.8h |  | CSS |
| 107 | 4.6.5.1 | Umsetzung Startseite |  | 2.19d | 2014-08-11 A | 2014-08-14 A | 98 | 100% |  | 2014-08-14 | 2014-08-21 |  |  | Felix; Lukas [25%] | 10.3h | 10.3h | Design-Umsetzung |  |
| 108 | 4.6.5.2 | Umsetzung Sendung-Detailseite |  | 1d | 2014-08-18 A | 2014-08-19 A | 107 | 100% |  | 2014-08-21 | 2014-08-28 |  |  | Felix [50%] | 4h | 4h |  |  |
| 109 | 4.6.5.3 | Umsetzung Persönlicher Bereich |  | 1d | 2014-08-25 A | 2014-08-26 A | 108 | 100% |  | 2014-08-28 | 2014-09-02 |  |  | Felix; Lukas [25%] | 8.5h | 8.5h |  |  |
| 110 | 4.6.6 | Anpassungen (Design) |  | 2d | 2014-08-26 A | 2014-09-01 A | 109 | 100% |  | 2014-09-02 | 2014-09-04 |  |  | Tobias [50%] | 8h | 8h |  |  |
| 111 | 4.6.7 | Browserspezifische Anpassungen |  | 1d | 2014-09-01 A | 2014-09-02 A | 110 | 100% |  | 2014-09-04 | 2014-09-05 |  |  | Tobias [50%] | 4h | 4h |  |  |
| 112 | 4.6.8 | Interface abgeschlossen | milestone | 0d | 2014-09-02 A | 2014-09-02 A | 111 | 100% |  | 2014-09-05 | 2014-09-05 |  |  | Felix |  |  |  |  |
| 113 | 5 | **Serverumzug** |  | 2.02d | 2014-08-18 A | 2014-08-21 A |  | 100% |  |  |  |  |  |  | 5.6h | 5.6h |  |  |
| 114 | 5.1 | Aktuellen Stand auf Remote Server hochladen (FTP) |  | 0.2d | 2014-08-18 A | 2014-08-18 A |  | 100% |  |  |  |  | start no earlier than 2014-08-18 | Lukas [50%] | 0.8h | 0.8h |  |  |
| 115 | 5.2 | Datenbank auf Remote einspielen |  | 0.2d | 2014-08-18 A | 2014-08-18 A | 114 | 100% |  |  |  |  |  | Lukas [50%] | 0.8h | 0.8h |  |  |
| 116 | 5.3 | Testing auf Remote Server |  | 1d | 2014-08-18 A | 2014-08-21 A | 115 | 100% |  |  |  |  |  | Lukas [50%] | 4h | 4h |  |  |
| 117 | 6 | **Testing** |  | 3.45d | 2014-09-03 A | 2014-09-09 | 7, 80 | 77% | 0.78d | 2014-09-05 | 2014-09-10 | 0d |  |  | 114.72h | 49.01h |  |  |
| 118 | 6.1 | **Softwaretests** |  | 0.85d | 2014-09-03 A | 2014-09-04 A |  | 100% |  | 2014-09-05 | 2014-09-09 |  |  | David; Felix; Lukas; Tobias | 26.88h | 26.88h | Testing |  |
| 119 | 6.1.1 | Test Links |  | 0.2d | 2014-09-03 A | 2014-09-04 A |  | 100% |  |  |  |  |  | David [10%]; Felix [10%]; Lukas [10%]; Tobias [10%] | 0.32h | 0.32h |  |  |
| 120 | 6.1.2 | Test Video abspielen |  | 0.2d | 2014-09-03 A | 2014-09-04 A |  | 100% |  |  |  |  |  | David [10%]; Felix [10%]; Lukas [10%]; Tobias [10%] | 0.32h | 0.32h |  |  |
| 121 | 6.1.3 | Funktionstest persönlicher Bereich |  | 0.2d | 2014-09-03 A | 2014-09-04 A |  | 100% |  |  |  |  |  | David [10%]; Felix [10%]; Lukas [10%]; Tobias [10%] | 0.32h | 0.32h |  |  |
| 122 | 6.1.4 | Test Suche |  | 0.2d | 2014-09-03 A | 2014-09-04 A |  | 100% |  |  |  |  |  | David [10%]; Felix [10%]; Lukas [10%]; Tobias [10%] | 0.32h | 0.32h |  |  |
| 123 | 6.1.5 | Korrekturen |  | 0.5d | 2014-09-04 A | 2014-09-04 A | 119, 120, 121, 122 | 100% |  |  |  |  |  | David [10%]; Felix [10%]; Lukas [10%] | 0.4h | 0.4h |  |  |
| 124 | 6.1.6 | Softwaretests abgeschlossen | milestone | 0d | 2014-09-04 A | 2014-09-04 A | 123 | 100% |  |  |  |  |  | David; Felix; Lukas; Tobias |  |  |  |  |

| ID | WBS | Task | Type | Duration | Start | Finish | Predecessors | Complete | Remaining | Baseline 1 start | Baseline 1 finish | Total slack | Resources | Work | Actual work |
| --- | --- | --- | --- | --- | --- | --- | --- | --- | --- | --- | --- | --- | --- | --- | --- |
| 125 | 6.2 | **Usability-Test** |  | 3.1d | 2014-09-04 A | 2014-09-09 | 124 | 68% | 1d | 2014-09-09 | 2014-09-10 | 0d | David; Felix; Lukas; Tobias | 87.84h | 22.13h |
| 126 | 6.2.1 | Konzeption Usability Test |  | 0.1d | 2014-09-04 A | 2014-09-04 A |  | 100% |  |  |  |  | David [30%] | 0.24h | 0.24h |
| 127 | 6.2.2 | Durchführung der Testsitzungen |  | 1d | 2014-09-04 A | 2014-09-05 A | 126 | 100% |  |  |  |  | David [20%]; Felix [20%]; Lukas [20%]; Tobias [20%] | 0.8h | 0.8h |
| 128 | 6.2.3 | Korrekturen |  | 2d | 2014-09-05 A | 2014-09-09 | 127 | 50% | 1d |  |  | 0d | David [20%]; Lukas [20%] | 6.4h | 3.2h |
| 129 | 7 | Projektabschluss | milestone | 0d | 2014-09-09 | 2014-09-09 | 117 |  |  |  |  | 0d | Lukas; David; Felix; Tobias |  |  |
